# 旧书购买系统2

Schedule from MS Project, 2016-09-01 to 2016-11-26, A marks actual dates.
寰�杞�涓�鍥�

## Calendars

- 标准: Mon-Fri 08:00-12:00, 13:00-17:00; Sat-Sun off. Exceptions (off unless hours are given): 2016-09-01 to 2016-12-01 08:00-12:00, 13:00-17:00 (recurring), 2016-09-10 08:00-12:00, 13:00-17:00, 2016-11-13 08:00-12:00, 13:00-17:00.

## Resources

| Resource |
| --- |
| 叶丽清 |
| 曾梦兰 |
| 项目成员 |
| 杨添 |
| 程戈 |

## Schedule

| ID | WBS | Task | Type | Duration | Start | Finish | Predecessors | Complete | Remaining | Total slack | Resources | Work | Actual work |
| --- | --- | --- | --- | --- | --- | --- | --- | --- | --- | --- | --- | --- | --- |
| 1 | 1 | **旧书购物系统** |  | 87d? | 2016-09-01 A | 2016-11-26 |  | 41% | 51.52d? | 0d |  | 832h | 308h |
| 2 | 1.1 | **启动阶段** |  | 3d | 2016-09-01 A | 2016-09-03 A |  | 100% |  |  |  | 16h | 16h |
| 3 | 1.1.1 | 指定项目经理，成立项目组 | manual | 1d | 2016-09-01 A | 2016-09-01 A |  | 100% |  |  |  |  |  |
| 4 | 1.1.2 | 召开项目启动会议 | manual | 1d | 2016-09-02 A | 2016-09-02 A | 3 | 100% |  |  | 杨添 | 8h | 8h |
| 5 | 1.1.3 | 准备项目章程 | manual | 1d | 2016-09-03 A | 2016-09-03 A | 4 | 100% |  |  | 叶丽清 | 8h | 8h |
| 6 | 1.2 | **计划** |  | 5d | 2016-09-04 A | 2016-09-08 A |  | 100% |  |  |  | 56h | 56h |
| 7 | 1.2.1 | 开团队计划会议 | manual | 1d | 2016-09-04 A | 2016-09-04 A | 5 | 100% |  |  | 项目成员 | 8h | 8h |
| 8 | 1.2.2 | 准备项目范围说明书 | manual | 1d | 2016-09-05 A | 2016-09-05 A | 7 | 100% |  |  | 曾梦兰 | 8h | 8h |
| 9 | 1.2.3 | 写项目工作分解结构 | manual | 1d | 2016-09-06 A | 2016-09-06 A | 8 | 100% |  |  | 曾梦兰 | 8h | 8h |
| 10 | 1.2.4 | 制定项目进度计划 | manual | 1d | 2016-09-07 A | 2016-09-07 A | 9 | 100% |  |  | 曾梦兰 | 8h | 8h |
| 11 | 1.2.5 | 成本预算 | manual | 1d | 2016-09-07 A | 2016-09-07 A | 7 | 100% |  |  | 叶丽清 | 8h | 8h |
| 12 | 1.2.6 | 项目风险分析 | manual | 1d | 2016-09-07 A | 2016-09-07 A |  | 100% |  |  | 杨添 | 8h | 8h |
| 13 | 1.2.7 | 评审 | manual | 1d | 2016-09-08 A | 2016-09-08 A | 12 | 100% |  |  | 杨添 | 8h | 8h |
| 14 | 1.3 | **执行阶段** |  | 75d | 2016-09-09 A | 2016-11-22 |  | 38% | 46.81d |  |  | 696h | 236h |
| 15 | 1.3.1 | **分析** |  | 8d | 2016-09-09 A | 2016-09-16 A |  | 100% |  |  |  | 64h | 64h |
| 16 | 1.3.1.1 | 软件需求调研 | manual | 2d | 2016-09-09 A | 2016-09-10 A | 13 | 100% |  |  | 项目成员 | 16h | 16h |
| 17 | 1.3.1.2 | 系统需求分析 | manual | 2d | 2016-09-11 A | 2016-09-12 A | 16 | 100% |  |  | 程戈 | 16h | 16h |
| 18 | 1.3.1.3 | 制订需求文档 | manual | 1d | 2016-09-13 A | 2016-09-13 A | 17 | 100% |  |  | 程戈 | 8h | 8h |
| 19 | 1.3.1.4 | 原型开发 | manual | 2d | 2016-09-14 A | 2016-09-15 A | 18 | 100% |  |  | 杨添 | 16h | 16h |
| 20 | 1.3.1.5 | 审阅需求规范 | manual | 1d | 2016-09-16 A | 2016-09-16 A | 19 | 100% |  |  | 杨添 | 8h | 8h |
| 21 | 1.3.2 | **设计阶段** |  | 39d | 2016-09-17 A | 2016-10-25 A |  | 100% |  |  |  | 172h | 172h |
| 22 | 1.3.2.1 | **概要设计** |  | 4d | 2016-09-17 A | 2016-09-20 A |  | 100% |  |  |  | 32h | 32h |
| 23 | 1.3.2.1.1 | 系统结构设计 | manual | 2d | 2016-09-17 A | 2016-09-18 A | 20 | 100% |  |  | 杨添 | 16h | 16h |
| 24 | 1.3.2.1.2 | 系统接口设计 | manual | 2d | 2016-09-19 A | 2016-09-20 A | 23 | 100% |  |  | 杨添 | 16h | 16h |

Notes:
- 4: 启动会议的内容： / 1、介绍本次项目的成员 / 2、回顾项目的背景 / 3、讨论项目章程 / 4、讨论项目的范围、时间和成本
- 9: 把一个项目，按一定的原则分解，项目分解成任务，任务再分解成一项项工作，再把一项项工作分配到每个人的日常活动中
- 12: 任何项目的实现过程中都会存在一定的不确定性，所以任何项目都是有风险的。项目实现过程中具有复杂性并且涉及到项目内外部的许多因素的变化，造成了项目过程中各种各样的风险。如果不能很好的分析和管理项目的风险，就会给项目相关利益主体造成各种各样的损失。所以在做项目之前一定要做好项目的风险分析计划和应对策略。
- 16: 为了做一个更好的软件系统，方便用户使用，通过与用户交流，市场分析的方式进行需求调研
- 17: 1.系统应该能允许用户进行注册并安全地存储用户信息； / 2.允许用户上架自己的书籍并录入书籍信息；能查看已上架的书籍；/ 3.能按照自己输入的关键字搜索到相应的书籍并选择购买与否；/ 4.系统应该记录用户的交易记录或收藏记录；系统应对用户的个人信息进行保密；/ 5.系统应允许管理员用户管理（增删改查）书籍交易信息、书籍信息和用户信息。
- 19: 原型设计之前需求或是功能信息都相对抽象，原型设计的过程就是将抽象信息即将页面的模块、元素、人机交互的形式，利用线框描述的方法，将产品脱离皮肤状态下更加具体跟生动的进行表达.我们将使用axure工具进行原型开发
- 22: 1、前端使用HTML、CSS和javascript / 2、后台同tomcat搭建本地服务器，使用python语言 / 3、框架用ssh/ 4、数据库用mySQL
- 23: 这部分要求提供高层系统结构（顶层系统结构、各子系统结构）的描述，使用方框图来显示主要的组件及组件间的交互 / 1.系统逻辑架构（软件的技术架构） / 2.系统物理架构 （物理设备架构图：软件如果部署到物理设备上） / 3.系统数据模型（系统逻辑数据模型）
- 24: 种提供给用户的界面以及内部、外部系统的接口设计

| ID | WBS | Task | Type | Duration | Start | Finish | Predecessors | Complete | Total slack | Free slack | Constraint | Resources | Work | Actual work |
| --- | --- | --- | --- | --- | --- | --- | --- | --- | --- | --- | --- | --- | --- | --- |
| 25 | 1.3.2.2 | **详细设计** |  | 25d | 2016-10-01 A | 2016-10-25 A |  | 100% |  |  |  |  | 140h | 140h |
| 26 | 1.3.2.2.1 | 系统复用计划 |  | 3d | 2016-10-01 A | 2016-10-03 A | 24 | 100% |  |  |  | 叶丽清; 杨添 | 48h | 48h |
| 27 | 1.3.2.2.2 | 系统接口设计详细 |  | 2d | 2016-10-02 A | 2016-10-04 A | 26 | 100% |  |  |  | 杨添 | 16h | 16h |
| 28 | 1.3.2.2.3 | 对象模型设计 |  | 8.5d | 2016-10-13 A | 2016-10-24 A | 27 | 100% |  |  | finish no earlier than 2016-10-20 | 杨添 | 68h | 68h |
| 29 | 1.3.2.2.4 | 动态模型设计 |  | 1d | 2016-10-25 A | 2016-10-25 A | 28 | 100% |  |  | finish no earlier than 2016-10-25 | 杨添 | 8h | 8h |
| 30 | 1.3.3 | **开发阶段** |  | 23d | 2016-10-26 | 2016-11-17 |  |  |  |  |  |  | 412h |  |
| 31 | 1.3.3.1 | 分派任务 | milestone | 0d | 2016-10-26 | 2016-10-26 | 29 |  | 31d | 2d |  | 杨添 [10%] |  |  |
| 32 | 1.3.3.2 | 数据库设计实现 |  | 1d | 2016-10-28 | 2016-10-28 | 31 |  | 29d |  | finish no earlier than 2016-10-28 | 杨添; 叶丽清 | 16h |  |
| 33 | 1.3.3.3 | **前端开发** |  | 23d | 2016-10-26 | 2016-11-17 |  |  |  |  |  | 曾梦兰; 程戈 | 368h |  |
| 34 | 1.3.3.3.1 | 登录注册界面 |  | 2d | 2016-10-26 | 2016-10-27 |  |  | 14d | 0d | start no earlier than 2016-10-26 |  |  |  |
| 35 | 1.3.3.3.2 | 系统首页 |  | 3d | 2016-10-28 | 2016-10-30 | 34 |  | 14d | 0d |  |  |  |  |
| 36 | 1.3.3.3.3 | 个人中心界面 |  | 3d | 2016-10-31 | 2016-11-02 | 35 |  | 14d | 0d |  |  |  |  |
| 37 | 1.3.3.3.4 | 添加商品界面 |  | 3d | 2016-11-03 | 2016-11-05 | 36 |  | 14d | 0d |  |  |  |  |
| 38 | 1.3.3.3.5 | 搜索界面 |  | 4d | 2016-11-06 | 2016-11-09 | 37 |  | 14d | 0d |  |  |  |  |
| 39 | 1.3.3.3.6 | 购买界面 |  | 3d | 2016-11-10 | 2016-11-12 | 38 |  | 14d |  |  |  |  |  |
| 40 | 1.3.3.4 | **后台开发** |  | 23d | 2016-10-26 | 2016-11-17 |  |  |  |  |  | 杨添 [10%]; 叶丽清 [10%] |  |  |
| 41 | 1.3.3.4.1 | 用户注册 |  | 2d | 2016-10-26 | 2016-10-27 |  |  | 5d | 0d | start no earlier than 2016-10-26 |  |  |  |
| 42 | 1.3.3.4.2 | 用户登录 |  | 3d | 2016-10-28 | 2016-10-30 | 41 |  | 3d | 0d | finish no earlier than 2016-10-28 |  |  |  |
| 43 | 1.3.3.4.3 | 出售书籍 |  | 3d | 2016-10-31 | 2016-11-02 | 42 |  | 3d |  | finish no earlier than 2016-11-02 |  |  |  |
| 44 | 1.3.3.4.4 | 搜索书籍 |  | 2d | 2016-11-06 | 2016-11-07 | 43 |  | 0d |  | finish no earlier than 2016-11-07 |  |  |  |
| 45 | 1.3.3.4.5 | 购买书籍 |  | 3d | 2016-11-08 | 2016-11-10 | 44 |  | 0d |  |  |  |  |  |
| 46 | 1.3.3.4.6 | 个人信息管理 |  | 2d | 2016-11-11 | 2016-11-12 | 45 |  | 0d |  |  |  |  |  |
| 47 | 1.3.3.5 | 开发人员初步调试 |  | 1d | 2016-11-13 | 2016-11-13 | 46 |  | 0d |  |  | 项目成员 | 8h |  |
| 48 | 1.3.3.6 | 完善代码 |  | 2d | 2016-11-14 | 2016-11-15 | 47 |  | 0d |  |  | 项目成员 | 16h |  |
| 49 | 1.3.3.7 | 代码评审 |  | 2d | 2016-11-16 | 2016-11-17 | 48 |  | 0d |  |  | 杨添 [25%] | 4h |  |

Notes:
- 25: 系统数据结构设计分为逻辑结构设计和物理结构设计
- 26: 库、框架、模式、构件等方面的复用
- 27: 各种提供给用户的界面 / 系统外部接口设计：与外部系统的交互设计 / 系统内部接口设计：各子系统、各模块间的接口设计
- 28: 对象模型（类图或对象图）：提供整个系统的对象模型，在其中应该包含 / 所有的系统对象。所有对象之间的关联必须被确定并且必 须指明联系的基数。 / 对象描述: 在叙述每个对象的细节，它的属性、
- 29: 描述系统如何响应各种事件。一般使用顺序图和状态图。
- 32: 我们将用mysql进行数据库的设计
- 33: 我们使用html+css+javascript进行前端开发
- 40: 后台用tomcat搭建本地服务器，使用python语言 / 框架用ssh / 数据库用mysql
- 47: 软件开发初步完成后，对产品进行调节试用，主要工作就是进行试用，发现其中存在的BUG，并进行修改

| ID | WBS | Task | Type | Duration | Start | Finish | Predecessors | Total slack | Resources | Work |
| --- | --- | --- | --- | --- | --- | --- | --- | --- | --- | --- |
| 50 | 1.3.4 | **测试阶段** |  | 6d | 2016-11-17 | 2016-11-22 |  |  | 项目成员 | 48h |
| 51 | 1.3.4.1 | **测试** |  | 6d | 2016-11-17 | 2016-11-22 |  |  |  |  |
| 52 | 1.3.4.1.1 | 测试代码 |  | 1d | 2016-11-18 | 2016-11-18 | 49 | 0d |  |  |
| 53 | 1.3.4.1.2 | 找出异常情况并修改 |  | 1d | 2016-11-19 | 2016-11-19 | 52 | 0d |  |  |
| 54 | 1.3.4.1.3 | 重新测试修改代码 |  | 1d | 2016-11-20 | 2016-11-20 | 53 | 0d |  |  |
| 55 | 1.3.4.1.4 | 完成测试 |  | 1d | 2016-11-21 | 2016-11-21 | 54 | 0d |  |  |
| 56 | 1.3.4.2 | 写测试报告 |  | 1d | 2016-11-22 | 2016-11-22 | 55 | 0d |  |  |
| 57 | 1.4 | **监控过程** |  | 1d? | 2016-09-01 | 2016-09-01 |  |  |  | 32h |
| 58 | 1.4.1 | 写报告 | manual | 1d | 2016-09-01 | 2016-09-01 |  |  | 杨添 | 8h |
| 59 | 1.4.2 | 线下开会 | manual | 1d | 2016-09-01 | 2016-09-01 |  |  | 项目成员 | 8h |
| 60 | 1.4.3 | 线上开会 | manual | 1d | 2016-09-01 | 2016-09-01 |  |  | 项目成员 | 8h |
| 61 | 1.4.4 | 每日电话报告 | manual | 1d | 2016-09-01 | 2016-09-01 |  |  | 杨添 | 8h |
| 62 | 1.4.5 | 变更控制 | manual | 1d? | 2016-09-01 | 2016-09-01 |  |  |  |  |
| 63 | 1.5 | **收尾** |  | 4d | 2016-11-23 | 2016-11-26 |  |  |  | 32h |
| 64 | 1.5.1 | 完成项目开发总结报告 | manual | 2d | 2016-11-23 | 2016-11-24 | 56 |  | 杨添 | 16h |
| 65 | 1.5.2 | 总结经验教训 | manual | 2d | 2016-11-25 | 2016-11-26 | 64 |  | 项目成员 | 16h |

Notes:
- 59: 面对面交流，讨论项目
- 60: 通过网上交流的方式讨论项目的进度，各成员遇到的难题和交付自己完成的任务
- 61: 项目经理每天会询问各成员当天进度
